# Demolition and Rehabilitation of Joel Plant Gold Plant: Phase 03-07

Schedule from MS Project, 2027-12-07 to 2029-09-28.

## Calendars

- South Africa Standard Working Calendar: Mon-Fri 08:00-12:00, 13:00-17:00; Sat-Sun off. Exceptions (off unless hours are given): 2027-12-16 (Day of Reconciliation), 2027-12-18 to 2028-01-11 (Contractor Break 2027-2028), 2028-03-21 (Human Rights Day), 2028-04-14 (Good Friday), 2028-04-17 (Family Day), 2028-04-27 (Freedom Day), 2028-05-01 (Workers' Day), 2028-06-16 (Youth Day), 2028-08-09 (National Women's Day), 2028-09-24 (Heritage Day), 2028-09-25 (Heritage Day (Observed)), 2028-12-16 (Day of Reconciliation), 2028-12-18 to 2029-01-11 (Contractor Break 2028-2029), 2029-03-21 (Human Rights Day), 2029-03-30 (Good Friday), 2029-04-02 (Family Day), 2029-04-27 (Freedom Day), 2029-05-01 (Workers' Day), 2029-06-16 (Youth Day), 2029-08-09 (National Women's Day), 2029-09-24 (Heritage Day).

## Schedule

| ID | WBS | Task | Type | Duration | Start | Finish | Predecessors | Total slack | Work |
| --- | --- | --- | --- | --- | --- | --- | --- | --- | --- |
| 1 | 1 | **Demolition and Rehabilitation of Joel Plant Gold Plant: Phase 03-07** |  | 422d? | 2027-12-07 | 2029-09-28 |  | 0d | 3328h |
| 2 | 1.1 | **Phase 03 - Demolition and Rehabilitation** |  | 52d? | 2027-12-07 | 2028-03-13 |  | 0d | 408h |
| 3 | 1.1.1 | Health & Safety and Environmental Compliance (activity #1 - 07/11/26) | milestone | 0d? | 2027-12-07 | 2027-12-07 |  | 0d |  |
| 4 | 1.1.2 | Site Establishment |  | 5d? | 2027-12-07 | 2027-12-13 | 3 | 0d | 40h |
| 5 | 1.1.3 | Confirm Phase 03 workfront release and isolation |  | 2d? | 2027-12-14 | 2027-12-15 | 4 | 0d | 16h |
| 6 | 1.1.4 | Break up and pulverise above-ground concrete and brickwork |  | 12d? | 2027-12-17 | 2028-01-26 | 5 | 0d | 96h |
| 7 | 1.1.5 | Expose, break up and pulverise below-ground concrete and brickwork |  | 10d? | 2028-01-27 | 2028-02-09 | 6 | 0d | 80h |
| 8 | 1.1.6 | Cut, segregate and remove reinforcement and steel structures |  | 8d? | 2028-02-10 | 2028-02-21 | 7 | 0d | 64h |
| 9 | 1.1.7 | Load, haul and stockpile pulverised material on site |  | 7d? | 2028-02-22 | 2028-03-01 | 8 | 0d | 56h |
| 10 | 1.1.8 | Shape, level and clean the work area |  | 5d? | 2028-03-02 | 2028-03-08 | 9 | 0d | 40h |
| 11 | 1.1.9 | Inspect rehabilitated area and close Phase 03 |  | 2d? | 2028-03-09 | 2028-03-10 | 10 | 0d | 16h |
| 12 | 1.1.10 | Phase 03 complete |  | 1d? | 2028-03-13 | 2028-03-13 | 11 | 0d |  |
| 13 | 1.2 | **Phase 02 - Demolition and Rehabilitation** |  | 67d? | 2028-03-14 | 2028-06-22 |  | 0d | 528h |
| 14 | 1.2.1 | Confirm Phase 02 workfront release and isolation |  | 3d? | 2028-03-14 | 2028-03-16 | 12 | 0d | 24h |
| 15 | 1.2.2 | Break up and pulverise above-ground concrete and brickwork |  | 18d? | 2028-03-17 | 2028-04-12 | 14 | 0d | 144h |
| 16 | 1.2.3 | Expose, break up and pulverise below-ground concrete and brickwork |  | 15d? | 2028-04-13 | 2028-05-09 | 15 | 0d | 120h |
| 17 | 1.2.4 | Cut, segregate and remove reinforcement and steel structures |  | 13d? | 2028-05-10 | 2028-05-26 | 16 | 0d | 104h |
| 18 | 1.2.5 | Load, haul and stockpile pulverised material on site |  | 10d? | 2028-05-29 | 2028-06-09 | 17 | 0d | 80h |
| 19 | 1.2.6 | Shape, level and clean the work area |  | 5d? | 2028-06-12 | 2028-06-19 | 18 | 0d | 40h |
| 20 | 1.2.7 | Inspect rehabilitated area and close Phase 02 |  | 2d? | 2028-06-20 | 2028-06-21 | 19 | 0d | 16h |
| 21 | 1.2.8 | Phase 02 complete |  | 1d? | 2028-06-22 | 2028-06-22 | 20 | 0d |  |
| 22 | 1.3 | **Phase 04 - Demolition and Rehabilitation** |  | 52d? | 2028-06-23 | 2028-09-05 |  | 0d | 408h |
| 23 | 1.3.1 | Confirm Phase 04 workfront release and isolation |  | 2d? | 2028-06-23 | 2028-06-26 | 21 | 0d | 16h |
| 24 | 1.3.2 | Confirm dam workfront release and environmental controls |  | 3d? | 2028-06-27 | 2028-06-29 | 23 | 0d | 24h |
| 25 | 1.3.3 | Break up and pulverise above-ground concrete and brickwork |  | 8d? | 2028-06-30 | 2028-07-11 | 24 | 0d | 64h |
| 26 | 1.3.4 | Expose, break up and pulverise below-ground concrete and brickwork |  | 9d? | 2028-07-12 | 2028-07-24 | 25 | 0d | 72h |
| 27 | 1.3.5 | Demolish and pulverise the on-site dam structures |  | 8d? | 2028-07-25 | 2028-08-03 | 26 | 0d | 64h |
| 28 | 1.3.6 | Cut, segregate and remove reinforcement and steel structures |  | 5d? | 2028-08-04 | 2028-08-11 | 27 | 0d | 40h |
| 29 | 1.3.7 | Load, haul and stockpile pulverised material on site |  | 4d? | 2028-08-14 | 2028-08-17 | 28 | 0d | 32h |
| 30 | 1.3.8 | Load and haul designated material from Joel Gold Plant to Target Gold Plant |  | 6d? | 2028-08-18 | 2028-08-25 | 29 | 0d | 48h |
| 31 | 1.3.9 | Shape, level and clean the work area |  | 4d? | 2028-08-28 | 2028-08-31 | 30 | 0d | 32h |
| 32 | 1.3.10 | Inspect rehabilitated area and close Phase 04 |  | 2d? | 2028-09-01 | 2028-09-04 | 31 | 0d | 16h |
| 33 | 1.3.11 | Phase 04 complete |  | 1d? | 2028-09-05 | 2028-09-05 | 32 | 0d |  |

| ID | WBS | Task | Duration | Start | Finish | Predecessors | Total slack | Work |
| --- | --- | --- | --- | --- | --- | --- | --- | --- |
| 34 | 1.4 | **Phase 01 - Demolition and Rehabilitation** | 108d? | 2028-09-06 | 2029-03-02 |  | 0d | 856h |
| 35 | 1.4.1 | Confirm Phase 01 workfront release and isolation | 3d? | 2028-09-06 | 2028-09-08 | 33 | 0d | 24h |
| 36 | 1.4.2 | Break up and pulverise above-ground concrete and brickwork | 24d? | 2028-09-11 | 2028-10-13 | 35 | 0d | 192h |
| 37 | 1.4.3 | Expose, break up and pulverise below-ground concrete and brickwork | 22d? | 2028-10-16 | 2028-11-14 | 36 | 0d | 176h |
| 38 | 1.4.4 | Cut, segregate and remove reinforcement and steel structures | 35d? | 2028-11-15 | 2029-01-29 | 37 | 0d | 280h |
| 39 | 1.4.5 | Load and haul pulverised material to Target Plant and stockpile on site | 14d? | 2029-01-30 | 2029-02-16 | 38 | 0d | 112h |
| 40 | 1.4.6 | Shape, level and clean the work area | 6d? | 2029-02-19 | 2029-02-26 | 39 | 0d | 48h |
| 41 | 1.4.7 | Inspect rehabilitated area and close Phase 01 | 3d? | 2029-02-27 | 2029-03-01 | 40 | 0d | 24h |
| 42 | 1.4.8 | Phase 01 complete | 1d? | 2029-03-02 | 2029-03-02 | 41 | 0d |  |
| 43 | 1.5 | **Phase 06 - Demolition and Rehabilitation** | 78d? | 2029-03-05 | 2029-06-27 |  | 0d | 616h |
| 44 | 1.5.1 | Confirm Phase 06 workfront release and isolation | 3d? | 2029-03-05 | 2029-03-07 | 42 | 0d | 24h |
| 45 | 1.5.2 | Break up and pulverise above-ground concrete and brickwork | 19d? | 2029-03-08 | 2029-04-06 | 44 | 0d | 152h |
| 46 | 1.5.3 | Expose, break up and pulverise below-ground silo foundations | 20d? | 2029-04-09 | 2029-05-08 | 45 | 0d | 160h |
| 47 | 1.5.4 | Cut, segregate and remove reinforcement and steel structures | 14d? | 2029-05-09 | 2029-05-28 | 46 | 0d | 112h |
| 48 | 1.5.5 | Load, haul and stockpile pulverised material on site | 8d? | 2029-05-29 | 2029-06-07 | 47 | 0d | 64h |
| 49 | 1.5.6 | Load and haul designated material from Joel Gold Plant to Target Gold Plant | 7d? | 2029-06-08 | 2029-06-18 | 48 | 0d | 56h |
| 50 | 1.5.7 | Shape, level and clean the work area | 4d? | 2029-06-19 | 2029-06-22 | 49 | 0d | 32h |
| 51 | 1.5.8 | Inspect rehabilitated area and close Phase 06 | 2d? | 2029-06-25 | 2029-06-26 | 50 | 0d | 16h |
| 52 | 1.5.9 | Phase 06 complete | 1d? | 2029-06-27 | 2029-06-27 | 51 | 0d |  |
| 53 | 1.6 | **Phase 07 - Demolition and Rehabilitation** | 65d? | 2029-06-28 | 2029-09-28 |  | 0d | 512h |
| 54 | 1.6.1 | Confirm Phase 07 workfront release and isolation | 3d? | 2029-06-28 | 2029-07-02 | 52 | 0d | 24h |
| 55 | 1.6.2 | Break up and pulverise above-ground concrete and brickwork | 16d? | 2029-07-03 | 2029-07-24 | 54 | 0d | 128h |
| 56 | 1.6.3 | Expose, break up and pulverise below-ground concrete and brickwork | 14d? | 2029-07-25 | 2029-08-14 | 55 | 0d | 112h |
| 57 | 1.6.4 | Cut, segregate and remove reinforcement and steel structures | 13d? | 2029-08-15 | 2029-08-31 | 56 | 0d | 104h |
| 58 | 1.6.5 | Load, haul and stockpile pulverised material on site | 10d? | 2029-09-03 | 2029-09-14 | 57 | 0d | 80h |
| 59 | 1.6.6 | Shape, level and clean the work area | 6d? | 2029-09-17 | 2029-09-25 | 58 | 0d | 48h |
| 60 | 1.6.7 | Inspect rehabilitated area and close Phase 07 | 2d? | 2029-09-26 | 2029-09-27 | 59 | 0d | 16h |
| 61 | 1.6.8 | Phase 07 complete | 1d? | 2029-09-28 | 2029-09-28 | 60 | 0d |  |
